# PI PROJEKT

Schedule from MS Project, 2017-04-03 to 2017-06-21, costs in kn, A marks actual dates.
Chicken Check

## Calendars

- Standard: Mon-Fri 08:00-16:00; Sat-Sun off. Exceptions (off unless hours are given): 2017-05-01 (1.maj).

## Resources

| Resource | Rate |
| --- | --- |
| Antonio | 45 |
| Josip | 45 |
| Bogdan | 50 |
| Računalo | 10 |

## Schedule

| ID | WBS | Task | Type | Duration | Start | Finish | Predecessors | Complete | Remaining | Total slack | Constraint | Resources | Work | Actual work | Cost | Actual cost |
| --- | --- | --- | --- | --- | --- | --- | --- | --- | --- | --- | --- | --- | --- | --- | --- | --- |
| 1 | 1 | **CHICKEN CHECK** |  | 57d | 2017-04-03 A | 2017-06-21 |  | 26% | 42.06d | 0d |  |  | 638h | 184h | 30,320 | 8,810 |
| 2 | 1.1 | **Planiranje projekta** |  | 0.5d | 2017-04-03 A | 2017-04-03 A |  | 100% |  |  |  |  | 12h | 12h | 560 | 560 |
| 3 | 1.1.1 | Sastanak tima |  | 2h | 2017-04-03 A | 2017-04-03 A |  | 100% |  |  |  | Antonio; Bogdan; Josip | 6h | 6h | 280 | 280 |
| 4 | 1.1.2 | Raspodjela uloga |  | 2h | 2017-04-03 A | 2017-04-03 A | 3 | 100% |  |  |  | Antonio; Bogdan; Josip | 6h | 6h | 280 | 280 |
| 5 | 1.1.3 | PLANIRANJE ZAVRŠENO | milestone | 0d | 2017-04-03 A | 2017-04-03 A | 4 | 100% |  |  |  |  |  |  |  |  |
| 6 | 1.2 | **Zahtjevi** |  | 2.5d | 2017-04-03 A | 2017-04-05 A |  | 100% |  |  |  |  | 52h | 52h | 2,520 | 2,520 |
| 7 | 1.2.1 | Proučavanje metodika |  | 1d | 2017-04-03 A | 2017-04-03 A | 5 | 100% |  |  |  | Josip; Računalo [300%]; Antonio; Bogdan | 24h | 24h | 1,150 | 1,150 |
| 8 | 1.2.2 | Odabir metodike |  | 2h | 2017-04-04 A | 2017-04-04 A | 7 | 100% |  |  |  | Josip; Antonio; Bogdan; Računalo [300%] | 6h | 6h | 310 | 310 |
| 9 | 1.2.3 | Analiziranje korisničkih zahtjeva |  | 6h | 2017-04-04 A | 2017-04-04 A | 8 | 100% |  |  |  | Antonio; Računalo | 6h | 6h | 280 | 280 |
| 10 | 1.2.4 | Analiziranje I definiranje sotfverskih zahtjeva |  | 8h | 2017-04-05 A | 2017-04-05 A | 9 | 100% |  |  |  | Računalo [200%]; Josip; Bogdan | 16h | 16h | 780 | 780 |
| 11 | 1.2.5 | PROJEKTNA DOKUMENTACIJA ZAVRŠENA | milestone | 0d | 2017-04-05 A | 2017-04-05 A | 10 | 100% |  |  |  |  |  |  |  |  |
| 12 | 1.3 | **Dizajniranje** |  | 6d | 2017-04-06 A | 2017-04-13 A |  | 100% |  |  |  |  | 120h | 120h | 5,730 | 5,730 |
| 13 | 1.3.1 | Izrada skice aplikacije |  | 1d | 2017-04-06 A | 2017-04-06 A | 11 | 100% |  |  |  | Računalo; Bogdan | 8h | 8h | 410 | 410 |
| 14 | 1.3.2 | Izrada dijagrama slučaja korištenja |  | 2d | 2017-04-07 A | 2017-04-10 A | 13 | 100% |  |  |  | Računalo [300%]; Antonio; Josip; Bogdan | 32h | 32h | 1,470 | 1,470 |
| 15 | 1.3.3 | Izrada dijagrama aktivnosti |  | 1d | 2017-04-11 A | 2017-04-11 A | 14 | 100% |  |  |  | Računalo; Josip | 8h | 8h | 370 | 370 |
| 16 | 1.3.4 | Izrada dijagrama slijeda |  | 1d | 2017-04-11 A | 2017-04-11 A | 14 | 100% |  |  |  | Računalo; Antonio | 8h | 8h | 370 | 370 |
| 17 | 1.3.5 | Izrada dijagrama klasa |  | 1d | 2017-04-12 A | 2017-04-12 A | 14 | 100% |  |  |  | Antonio; Josip; Računalo [200%] | 16h | 16h | 740 | 740 |
| 18 | 1.3.6 | Izrada ERA modela |  | 2d | 2017-04-07 A | 2017-04-10 A | 13 | 100% |  |  |  | Bogdan; Računalo | 16h | 16h | 810 | 810 |
| 19 | 1.3.7 | Izrada relacijskog modela I relacijske sheme |  | 1d | 2017-04-11 A | 2017-04-11 A | 18 | 100% |  |  |  | Računalo; Bogdan | 8h | 8h | 410 | 410 |
| 20 | 1.3.8 | Uređivanje tehničke dokumentacije |  | 1d | 2017-04-13 A | 2017-04-13 A | 19 | 100% |  |  |  | Antonio; Josip; Računalo [300%]; Bogdan | 24h | 24h | 1,150 | 1,150 |
| 21 | 1.3.9 | Dizajniranje završeno | milestone | 0d | 2017-04-13 A | 2017-04-13 A | 20 | 100% |  |  |  |  |  |  |  |  |
| 22 | 1.4 | **Implementacija I testiranje komponenti** |  | 31d | 2017-04-28 | 2017-06-12 |  |  |  | 0d |  |  | 336h |  | 16,010 |  |
| 23 | 1.4.1 | Izrada modula za početni zaslon |  | 2d | 2017-04-28 | 2017-05-02 | 21 |  |  | 0d | start no earlier than 2017-04-28 | Računalo; Bogdan | 16h |  | 810 |  |
| 24 | 1.4.2 | Izrada modula za registraciju I prijavu |  | 2d | 2017-05-03 | 2017-05-04 | 23 |  |  | 0d |  | Bogdan; Računalo | 16h |  | 810 |  |
| 25 | 1.4.3 | Izrada modula za davanje ovlasti korisnicima |  | 2d | 2017-05-05 | 2017-05-08 | 24 |  |  | 0d |  | Bogdan; Računalo | 16h |  | 810 |  |
| 26 | 1.4.4 | Izrada modula za unos broja kokoši nesilica |  | 2d | 2017-05-09 | 2017-05-10 | 25 |  |  | 0d |  | Josip; Računalo | 16h |  | 730 |  |
| 27 | 1.4.5 | Izrada modula za evidenciju cijepiva |  | 2d | 2017-05-11 | 2017-05-12 | 26 |  |  | 0d |  | Josip; Računalo | 16h |  | 730 |  |
| 28 | 1.4.6 | Izrada modula za evidenciju sirovina |  | 3d | 2017-05-15 | 2017-05-17 | 27 |  |  | 0d |  | Josip; Računalo | 24h |  | 1,090 |  |
| 29 | 1.4.7 | Izrada modula za evidenciju hrane |  | 3d | 2017-05-18 | 2017-05-22 | 28 |  |  | 0d |  | Josip; Računalo [200%]; Bogdan | 48h |  | 2,300 |  |
| 30 | 1.4.8 | Izrada modula za evidenciju jaja |  | 2d | 2017-05-23 | 2017-05-24 | 29 |  |  | 0d |  | Antonio; Računalo | 16h |  | 730 |  |
| 31 | 1.4.9 | Izrada modula evidenciju narudžbi |  | 2d | 2017-05-25 | 2017-05-26 | 30 |  |  | 0d |  | Antonio; Računalo | 16h |  | 730 |  |
| 32 | 1.4.10 | Izrada modula za evidenciju ukupne prodaje jaja |  | 2d | 2017-05-29 | 2017-05-30 | 31 |  |  | 0d |  | Antonio; Računalo | 16h |  | 730 |  |
| 33 | 1.4.11 | Izrada modula za grafičku reprezentaciju podataka |  | 4d | 2017-05-31 | 2017-06-05 | 32 |  |  | 0d |  | Računalo [200%]; Bogdan; Antonio | 64h |  | 3,060 |  |
| 34 | 1.4.12 | Testiranje pojedinačnih modula |  | 2d | 2017-06-06 | 2017-06-07 | 33 |  |  | 0d |  | Antonio; Bogdan; Josip; Računalo [300%] | 48h |  | 2,270 |  |
| 35 | 1.4.13 | Otklanjanje potencijalnih grešaka |  | 3d | 2017-06-08 | 2017-06-12 | 34 |  |  | 0d |  | Bogdan; Računalo | 24h |  | 1,210 |  |
| 36 | 1.4.14 | Implementacija I testiranje komponenti završeno | milestone | 0d | 2017-06-12 | 2017-06-12 | 35 |  |  | 0d |  |  |  |  |  |  |

| ID | WBS | Task | Type | Duration | Start | Finish | Predecessors | Total slack | Resources | Work | Cost |
| --- | --- | --- | --- | --- | --- | --- | --- | --- | --- | --- | --- |
| 37 | 1.5 | **Isporuka I primjena** |  | 7d | 2017-06-13 | 2017-06-21 |  | 0d |  | 118h | 5,500 |
| 38 | 1.5.1 | Implementacija sofvera |  | 3h | 2017-06-13 | 2017-06-13 | 36 | 0d | Računalo; Bogdan | 3h | 160 |
| 39 | 1.5.2 | Testiranje softvera |  | 2d | 2017-06-13 | 2017-06-15 | 38 | 0d | Antonio; Računalo [200%]; Josip | 32h | 1,460 |
| 40 | 1.5.3 | Otklanjanje potencijalnih grešaka |  | 3d | 2017-06-15 | 2017-06-20 | 39 | 0d | Josip; Računalo [200%]; Antonio | 48h | 2,180 |
| 41 | 1.5.4 | Edukacija korisnika |  | 4h | 2017-06-20 | 2017-06-20 | 40 | 0d | Antonio; Josip; Računalo [200%] | 8h | 380 |
| 42 | 1.5.5 | Izrada korisničke dokumentacije |  | 1d | 2017-06-20 | 2017-06-21 | 41 | 0d | Antonio; Bogdan; Josip; Računalo [300%] | 24h | 1,150 |
| 43 | 1.5.6 | Predaja projekta |  | 1h | 2017-06-21 | 2017-06-21 | 42 | 0d | Antonio; Bogdan; Josip; Računalo [300%] | 3h | 170 |
| 44 | 1.5.7 | PROJEKT ZAVRŠEN | milestone | 0d | 2017-06-21 | 2017-06-21 | 43 | 0d |  |  |  |
